# ENDA Mifos Rollout

Schedule from Planner, 2006-07-26 to 2007-07-19.

## Calendars

- Default: Mon-Fri 08:00-12:00, 13:00-17:00; Sat-Sun off.

## Resources

| Resource |
| --- |
| Youssef Assad |
| Lassad Bel Hadj |
| Radhouane Jrad |
| Emily Tucker |
| Essma Ben Hamida |
| Mifos Specialist |

## Schedule

| ID | WBS | Task | Start | Finish | Predecessors | Constraint | Resources | Work |
| --- | --- | --- | --- | --- | --- | --- | --- | --- |
| 1 | 1 | Workplan definition (1.0) | 2006-07-26 | 2006-08-03 |  |  |  | 56h |
| 2 | 2 | **Completion of gap plan** | 2006-07-26 | 2006-08-17 |  |  |  | 136h |
| 3 | 2.1 | **Acquisition of Lassad's list of gaps** | 2006-07-26 | 2006-08-03 |  | must start on 2006-07-25 |  | 56h |
| 4 | 2.1.1 | Lassad to run through mifos noting gaps | 2006-07-26 | 2006-07-27 |  |  | Lassad Bel Hadj | 16h |
| 5 | 2.1.2 | Lassad to collect feedback from testing users at ENDA | 2006-07-28 | 2006-08-03 | 4 |  | Lassad Bel Hadj | 40h |
| 6 | 2.2 | **Validation of Lassad's gap list** | 2006-08-04 | 2006-08-08 | 3 |  |  | 24h |
| 7 | 2.2.1 | YA to validate | 2006-08-04 | 2006-08-08 |  |  | Youssef Assad | 24h |
| 8 | 2.2.2 | RJ to validate | 2006-08-04 | 2006-08-08 |  |  | Radhouane Jrad | 24h |
| 9 | 2.2.3 | ET to validate | 2006-08-04 | 2006-08-08 |  |  | Emily Tucker | 24h |
| 10 | 2.3 | **Approval of gap plan** | 2006-08-09 | 2006-08-17 | 6 |  |  | 56h |
| 11 | 2.3.1 | Incorporation of recommendations from validation | 2006-08-09 | 2006-08-10 |  |  | Youssef Assad | 16h |
| 12 | 2.3.2 | ENDA review & sign-off | 2006-08-11 | 2006-08-17 | 11 |  |  | 40h |
| 13 | 2.3.3 | GTC review & sign-off | 2006-08-11 | 2006-08-17 | 11 |  |  | 40h |
| 14 | 3 | **Performance testing** | 2006-09-14 | 2006-11-23 |  |  |  | 408h |
| 15 | 3.1 | Define performance testing metrics | 2006-09-14 | 2006-09-14 |  | start no earlier than 2006-09-14 |  | 8h |
| 16 | 3.2 | Execute performance tests | 2006-09-15 | 2006-10-12 | 15 |  |  | 160h |
| 17 | 3.3 | Performance testing results analysis and recommendation | 2006-10-13 | 2006-10-26 | 16 |  |  | 80h |
| 18 | 3.4 | Implementation of recommendations if any | 2006-10-27 | 2006-11-23 | 17 |  |  | 160h |
| 19 | 4 | **Training for testing users** | 2006-07-26 | 2006-09-08 |  |  |  | 264h |
| 20 | 4.1 | Identification of testing users to train | 2006-07-26 | 2006-07-26 |  |  |  | 8h |
| 21 | 4.2 | Definition of training methodology and materiel | 2006-08-23 | 2006-08-29 | 20 | start no earlier than 2006-08-23 |  | 40h |
| 22 | 4.3 | Execution of training | 2006-09-04 | 2006-09-08 | 21 | start no earlier than 2006-09-04 |  | 40h |
| 23 | 5 | **RFP definition** | 2006-08-18 | 2006-08-30 | 2 |  |  | 72h |
| 24 | 5.1 | Definition of RFP format | 2006-08-18 | 2006-08-22 |  |  | Youssef Assad | 24h |
| 25 | 5.2 | Mapping of gap plan to RFP | 2006-08-23 | 2006-08-30 | 24 |  |  | 48h |
| 26 | 5.3 | Incorporation of data migration requirements in RFP | 2006-08-23 | 2006-08-24 | 25SS |  |  | 16h |
| 27 | 6 | Project workplan review (2.0) | 2006-08-31 | 2006-08-31 | 23 |  | Youssef Assad; Lassad Bel Hadj; Radhouane Jrad; Emily Tucker; Essma Ben Hamida | 16h |

Notes:
- 2: Completion meaning: / 1. Documenting the 75% of gaps representing 95% of total gaps / 2. Documenting 100% of showstopper gaps / 3. Assignment of gap responsibility (development or process re-engineering)
- 14: Performance of MySQL, JBoss, the underlying OS.

| ID | WBS | Task | Start | Finish | Predecessors | Resources | Work |
| --- | --- | --- | --- | --- | --- | --- | --- |
| 28 | 7 | **Selection of Mifos specialist** | 2006-08-31 | 2006-10-03 | 27 |  | 184h |
| 29 | 7.1 | Definition of MENA Mifos ecosystem | 2006-08-31 | 2006-09-04 |  |  | 16h |
| 30 | 7.2 | Definition of Mifos Specialist | 2006-09-04 | 2006-09-08 | 29 |  | 32h |
| 31 | 7.3 | Short-listing of candidates | 2006-09-08 | 2006-09-11 | 30 |  | 8h |
| 32 | 7.4 | Issuance of RFP | 2006-08-31 | 2006-09-21 | 2 |  | 120h |
| 33 | 7.5 | **Evaluation of bids** | 2006-09-21 | 2006-09-28 | 32 |  | 40h |
| 34 | 7.5.1 | GFUSA Evaluation | 2006-09-21 | 2006-09-28 |  | Youssef Assad; Emily Tucker | 80h |
| 35 | 7.5.2 | ENDA Evaluation | 2006-09-21 | 2006-09-22 |  | Lassad Bel Hadj; Radhouane Jrad; Essma Ben Hamida | 24h |
| 36 | 7.6 | Selection of Mifos Specialist | 2006-09-28 | 2006-10-03 | 33 |  | 24h |
| 37 | 8 | **Engagement of Mifos Specialist** | 2006-10-03 | 2007-06-13 | 28 |  | 1448h |
| 38 | 8.1 | Kickoff meeting (GFUSA, ENDA, Specialist) | 2006-10-03 | 2006-10-04 |  |  | 8h |
| 39 | 8.2 | Workplan definition for development | 2006-10-04 | 2006-10-05 | 38 | Youssef Assad; Radhouane Jrad; Mifos Specialist | 24h |
| 40 | 8.3 | Definition of per-gap development plans and data migration strategy | 2006-10-05 | 2006-11-16 | 39 | Mifos Specialist | 240h |
| 41 | 8.4 | Validation of development plans | 2006-11-16 | 2006-11-23 | 40 | Emily Tucker | 40h |
| 42 | 8.5 | **PRI1 Development Areas Engaged** | 2006-11-23 | 2007-01-02 | 41 | Mifos Specialist | 224h |
| 43 | 8.5.1 | Development | 2006-11-23 | 2006-12-14 |  |  | 120h |
| 44 | 8.5.2 | User testing at ENDA | 2006-11-23 | 2006-12-14 | 43SS |  | 120h |
| 45 | 8.5.3 | Acquisition and validation of user testing feedback | 2006-12-14 | 2006-12-19 | 44 |  | 24h |
| 46 | 8.5.4 | Incorporation of validated changes (development) | 2006-12-19 | 2007-01-02 | 45 |  | 80h |
| 47 | 8.5.5 | User testing at ENDA of amended development work | 2006-12-19 | 2007-01-02 | 46SS |  | 80h |
| 48 | 8.6 | Project workplan review (3.0) | 2007-01-02 | 2007-01-04 | 42 |  | 16h |
| 49 | 8.7 | **PRI2 Development Areas Engaged** | 2007-01-04 | 2007-05-02 | 48 |  | 672h |
| 50 | 8.7.1 | Development | 2007-01-04 | 2007-03-08 |  |  | 360h |
| 51 | 8.7.2 | User testing at ENDA | 2007-01-04 | 2007-03-08 | 50SS |  | 360h |
| 52 | 8.7.3 | Acquisition and validation of user testing feedback | 2007-03-08 | 2007-03-21 | 51 |  | 72h |
| 53 | 8.7.4 | Incorporation of validated changes (development) | 2007-03-21 | 2007-05-02 | 52 |  | 240h |
| 54 | 8.7.5 | User testing at ENDA of amended development work | 2007-03-21 | 2007-05-02 | 53SS |  | 240h |
| 55 | 8.8 | Project workplan review (4.0) | 2007-05-02 | 2007-05-04 | 49 |  | 16h |

Notes:
- 42: PRI1 development areas: / 1. Max 20% of aggregate development workload / 2. In top 20% in terms of showstopping / Note that development in this area includes mifos configuration of parameters which are exposed by vanilla mifos
- 49: PRI1 development areas: / 1. 60% of aggregate development workload / 2. Equivalent to workload remaining when PRI1 and PRI3 are deducted from total

| ID | WBS | Task | Start | Finish | Predecessors | Work |
| --- | --- | --- | --- | --- | --- | --- |
| 56 | 8.9 | **PRI3 Development Areas Engaged** | 2007-05-04 | 2007-06-13 | 55 | 224h |
| 57 | 8.9.1 | Development | 2007-05-04 | 2007-05-25 |  | 120h |
| 58 | 8.9.2 | User testing at ENDA | 2007-05-04 | 2007-05-25 | 57SS | 120h |
| 59 | 8.9.3 | Acquisition and validation of user testing feedback | 2007-05-25 | 2007-05-30 | 58 | 24h |
| 60 | 8.9.4 | Incorporation of validated changes (development) | 2007-05-30 | 2007-06-13 | 59 | 80h |
| 61 | 8.9.5 | User testing at ENDA of amended development work | 2007-05-30 | 2007-06-13 | 60SS | 80h |
| 62 | 9 | **Data migration** | 2006-11-23 | 2007-02-15 | 42SS | 480h |
| 63 | 9.1 | Development | 2006-11-23 | 2007-01-25 |  | 360h |
| 64 | 9.2 | Execution | 2007-01-25 | 2007-02-08 | 63 | 80h |
| 65 | 9.3 | Validation of migrated data | 2007-02-08 | 2007-02-15 | 64 | 40h |
| 66 | 10 | **User training (all system users)** | 2007-05-04 | 2007-05-30 | 56SS | 144h |
| 67 | 10.1 | Adaptation/updating of existing course methodology and materiel | 2007-05-04 | 2007-05-16 |  | 64h |
| 68 | 10.2 | Execution of training | 2007-05-16 | 2007-05-30 | 67 | 80h |
| 69 | 11 | **Rollout** | 2007-06-13 | 2007-07-19 | 61 | 208h |
| 70 | 11.1 | Deployment in smallest branches | 2007-06-13 | 2007-06-22 |  | 56h |
| 71 | 11.2 | Validation of deployment in smallest branches | 2007-06-22 | 2007-06-26 | 70 | 16h |
| 72 | 11.3 | Process adjustment for smallest branches | 2007-06-26 | 2007-06-28 | 71 | 16h |
| 73 | 11.4 | Deployment in remaining branches | 2007-06-28 | 2007-07-05 | 72 | 40h |
| 74 | 11.5 | Validation of deployment in remaining branches | 2007-07-05 | 2007-07-10 | 73 | 24h |
| 75 | 11.6 | Process adjustment for remaining branches | 2007-07-10 | 2007-07-13 | 74 | 24h |
| 76 | 11.7 | Situation assessment (pre-Mifos vs. post-Mifos) | 2007-07-13 | 2007-07-17 | 75 | 16h |
| 77 | 11.8 | Retirement of FATEN | 2007-07-17 | 2007-07-19 | 76 | 16h |
| 78 | 12 | Admin/development training | 2007-05-04 | 2007-05-25 | 56SS | 120h |

Notes:
- 56: PRI1 development areas: / 1. Max 20% of aggregate development workload / 2. In bottom 20% in terms of showstopping / This task includes parametrage for parameters which arise as a result of development effort in PRI1, PRI2, and eventually PRI3
- 63: Includes development of scripts, testing on sample data, etc.
- 64: Importing of actual data into mifos. / Facilitating the on-demand import of data from faten to mifos such that ENDA may migrate the data easily on demand subsequently
- 70: Smallest branches defind as: / 20% of total clients, or / 20% of outstanding portfolio / Whichever is smaller
